# Bai1

Schedule from MS Project, 2022-10-28 to 2023-02-16, costs in $, A marks actual dates.

## Calendars

- Standard: Mon-Fri 08:00-12:00, 13:00-17:00; Sat-Sun off.

## Resources

| Resource | Rate |
| --- | --- |
| Nguyễn Văn An | 30 |
| Võ Văn Chánh | 20 |
| Trần Vũ Bình | 20 |

## Schedule

| ID | WBS | Task | Type | Duration | Start | Finish | Predecessors | Complete | Actual finish | Baseline start | Baseline finish | Baseline duration | Baseline 1 start | Baseline 1 finish | Constraint | Resources | Work | Actual work | Cost | Baseline cost | Actual cost |
| --- | --- | --- | --- | --- | --- | --- | --- | --- | --- | --- | --- | --- | --- | --- | --- | --- | --- | --- | --- | --- | --- |
| 1 | 1 | **Xây dựng phần mềm tra cứu thông tin tổng đài** |  | 4mo | 2022-10-28 08:00 A | 2023-02-16 17:00 |  | 100% | 2023-01-27 15:00 | 2022-10-28 08:00 | 2023-02-16 17:00 | 4mo | 2022-10-28 08:00 | 2023-02-16 17:00 |  |  | 488h | 488h | 11,760 | 7,580 | 11,760 |
| 2 | 1.1 | Quản lý dự án | milestone | 0d | 2022-10-28 08:00 A | 2022-10-28 08:00 A |  | 100% |  | 2022-10-28 08:00 | 2022-10-28 08:00 | 0d | 2022-10-28 08:00 | 2022-10-28 08:00 | start no earlier than 2022-10-28 08:00 | Nguyễn Văn An |  |  |  |  |  |
| 3 | 1.2 | **Họp định kỳ hàng tuần** |  | 35.12d | 2022-10-28 13:00 A | 2022-12-16 14:00 A |  | 100% |  | 2022-10-28 13:00 | 2022-12-16 14:00 | 35.12d | 2022-10-28 13:00 | 2022-12-16 14:00 |  |  | 24h | 24h | 560 | 560 | 560 |
| 4 | 1.2.1 | Họp định kỳ hàng tuần 1 |  | 1h | 2022-10-28 13:00 A | 2022-10-28 14:00 A |  | 100% |  | 2022-10-28 13:00 | 2022-10-28 14:00 | 1h | 2022-10-28 13:00 | 2022-10-28 14:00 | start no earlier than 2022-10-28 08:00 | Nguyễn Văn An; Trần Vũ Bình; Võ Văn Chánh | 3h | 3h | 70 | 70 | 70 |
| 5 | 1.2.2 | Họp định kỳ hàng tuần 2 |  | 1h | 2022-11-04 13:00 A | 2022-11-04 14:00 A |  | 100% |  | 2022-11-04 13:00 | 2022-11-04 14:00 | 1h | 2022-11-04 13:00 | 2022-11-04 14:00 | start no earlier than 2022-11-04 08:00 | Nguyễn Văn An; Trần Vũ Bình; Võ Văn Chánh | 3h | 3h | 70 | 70 | 70 |
| 6 | 1.2.3 | Họp định kỳ hàng tuần 3 |  | 1h | 2022-11-11 13:00 A | 2022-11-11 14:00 A |  | 100% |  | 2022-11-11 13:00 | 2022-11-11 14:00 | 1h | 2022-11-11 13:00 | 2022-11-11 14:00 | start no earlier than 2022-11-11 08:00 | Nguyễn Văn An; Trần Vũ Bình; Võ Văn Chánh | 3h | 3h | 70 | 70 | 70 |
| 7 | 1.2.4 | Họp định kỳ hàng tuần 4 |  | 1h | 2022-11-18 13:00 A | 2022-11-18 14:00 A |  | 100% |  | 2022-11-18 13:00 | 2022-11-18 14:00 | 1h | 2022-11-18 13:00 | 2022-11-18 14:00 | start no earlier than 2022-11-18 08:00 | Nguyễn Văn An; Trần Vũ Bình; Võ Văn Chánh | 3h | 3h | 70 | 70 | 70 |
| 8 | 1.2.5 | Họp định kỳ hàng tuần 5 |  | 1h | 2022-11-25 13:00 A | 2022-11-25 14:00 A |  | 100% |  | 2022-11-25 13:00 | 2022-11-25 14:00 | 1h | 2022-11-25 13:00 | 2022-11-25 14:00 | start no earlier than 2022-11-25 08:00 | Trần Vũ Bình; Võ Văn Chánh; Nguyễn Văn An | 3h | 3h | 70 | 70 | 70 |
| 9 | 1.2.6 | Họp định kỳ hàng tuần 6 |  | 1h | 2022-12-02 13:00 A | 2022-12-02 14:00 A |  | 100% |  | 2022-12-02 13:00 | 2022-12-02 14:00 | 1h | 2022-12-02 13:00 | 2022-12-02 14:00 | start no earlier than 2022-12-02 08:00 | Nguyễn Văn An; Trần Vũ Bình; Võ Văn Chánh | 3h | 3h | 70 | 70 | 70 |
| 10 | 1.2.7 | Họp định kỳ hàng tuần 7 |  | 1h | 2022-12-09 13:00 A | 2022-12-09 14:00 A |  | 100% |  | 2022-12-09 13:00 | 2022-12-09 14:00 | 1h | 2022-12-09 13:00 | 2022-12-09 14:00 | start no earlier than 2022-12-09 08:00 | Nguyễn Văn An; Trần Vũ Bình; Võ Văn Chánh | 3h | 3h | 70 | 70 | 70 |
| 11 | 1.2.8 | Họp định kỳ hàng tuần 8 |  | 1h | 2022-12-16 13:00 A | 2022-12-16 14:00 A |  | 100% |  | 2022-12-16 13:00 | 2022-12-16 14:00 | 1h | 2022-12-16 13:00 | 2022-12-16 14:00 | start no earlier than 2022-12-16 08:00 | Nguyễn Văn An; Trần Vũ Bình; Võ Văn Chánh | 3h | 3h | 70 | 70 | 70 |
| 12 | 1.3 | **Khảo sát và phân tích** |  | 65.25d | 2022-10-28 13:00 A | 2023-01-27 15:00 A |  | 100% |  | 2022-10-28 13:00 | 2022-12-16 16:00 | 35.38d | 2022-10-28 13:00 | 2023-01-05 12:00 |  |  | 464h | 464h | 11,200 | 7,020 | 11,200 |
| 13 | 1.3.1 | **Khảo sát hiện trạng** |  | 10.88d | 2022-10-28 13:00 A | 2022-11-14 11:00 A |  | 100% |  | 2022-10-28 13:00 | 2022-11-09 09:00 | 7.62d | 2022-10-28 13:00 | 2022-11-09 09:00 |  |  | 81h | 81h | 1,940 | 1,600 | 1,940 |
| 14 | 1.3.1.1 | Xây dựng nội dung khảo sát |  | 2d | 2022-10-28 13:00 A | 2022-11-02 17:00 A |  | 100% |  | 2022-10-28 13:00 | 2022-11-02 17:00 | 2d | 2022-10-28 13:00 | 2022-11-02 17:00 | start no earlier than 2022-10-28 08:00 | Nguyễn Văn An | 16h | 16h | 480 | 480 | 480 |
| 15 | 1.3.1.2 | Khảo sát phạm vi mô hình hoá nghiệp vụ. |  | 2d | 2022-11-03 08:00 A | 2022-11-09 09:00 A | 14 | 100% |  | 2022-11-03 08:00 | 2022-11-09 09:00 | 2d | 2022-11-03 08:00 | 2022-11-09 09:00 |  | Nguyễn Văn An | 16h | 16h | 480 | 480 | 480 |
| 16 | 1.3.1.3 | Khảo sát hiện trạng nghiệp vụ cụ thể. |  | 5.12d | 2022-11-03 08:00 A | 2022-11-14 11:00 A | 14 | 100% |  | 2022-11-03 08:00 | 2022-11-09 08:00 | 3d | 2022-11-03 08:00 | 2022-11-09 08:00 |  | Trần Vũ Bình | 41h | 41h | 820 | 480 | 820 |
| 17 | 1.3.1.4 | Xác định các đối tượng liênquan và các nhu cầu của các đối tượng. |  | 1d | 2022-10-28 14:00 A | 2022-11-01 09:00 A |  | 100% |  | 2022-10-28 14:00 | 2022-11-01 09:00 | 1d | 2022-10-28 14:00 | 2022-11-01 09:00 |  | Võ Văn Chánh | 8h | 8h | 160 | 160 | 160 |
| 18 | 1.3.2 | **Tố chức thực hiện** |  | 22.62d | 2022-11-09 09:00 A | 2022-12-09 15:00 A |  | 100% |  | 2022-11-09 08:00 | 2022-11-25 15:00 | 12.75d | 2022-11-09 08:00 | 2022-12-08 17:00 |  |  | 119h | 119h | 2,380 | 2,380 | 2,380 |
| 19 | 1.3.2.1 | Xây dựng sơ đồ mô hình hoá quy trình nghiệp vụ. |  | 6.88d | 2022-11-09 09:00 A | 2022-12-09 15:00 A | 15 | 100% |  | 2022-11-09 09:00 | 2022-11-23 10:00 | 6.88d | 2022-11-09 09:00 | 2022-11-23 10:00 |  | Võ Văn Chánh | 55h | 55h | 1,100 | 1,100 | 1,100 |
| 20 | 1.3.2.2 | Phân tích thiết kế sơ đồ mô hình hoá cho từng nghiệp vụ cụ thể. |  | 8d | 2022-11-14 13:00 A | 2022-11-29 17:00 A | 16 | 100% |  | 2022-11-09 08:00 | 2022-11-25 15:00 | 8d | 2022-11-09 08:00 | 2022-12-08 17:00 |  | Võ Văn Chánh | 64h | 64h | 1,280 | 1,280 | 1,280 |
| 21 | 1.3.3 | **Kiểm tra** |  | 33.25d | 2022-10-28 13:00 A | 2022-12-14 15:00 A |  | 100% |  | 2022-11-23 10:00 | 2022-11-30 17:00 | 5.75d | 2022-11-23 10:00 | 2022-12-20 14:00 |  |  | 64h | 64h | 1,920 | 960 | 1,920 |
| 22 | 1.3.3.1 | Kiểm tra sơ đồ quy trình nghiệp vụ |  | 2d | 2022-12-09 15:00 A | 2022-12-14 15:00 A | 19 | 100% |  | 2022-11-23 10:00 | 2022-11-25 15:00 | 2d | 2022-11-23 10:00 | 2022-11-25 15:00 |  | Nguyễn Văn An | 16h | 16h | 480 | 480 | 480 |
| 23 | 1.3.3.2 | Kiểm tra phân tích thiết kế |  | 2d | 2022-11-30 08:00 A | 2022-12-01 17:00 A | 20, 8 | 100% |  | 2022-11-28 08:00 | 2022-11-30 17:00 | 2d | 2022-12-09 14:00 | 2022-12-14 14:00 | start no earlier than 2022-11-28 08:00 | Nguyễn Văn An | 16h | 16h | 480 | 480 | 480 |
| 24 | 1.3.3.3 | Phân tích lại hệ thống |  | 4d | 2022-10-28 13:00 A | 2022-11-28 11:00 A |  | 100% |  |  |  |  | 2022-12-14 08:00 | 2022-12-20 14:00 |  | Nguyễn Văn An | 32h | 32h | 960 |  | 960 |

Notes:
- 2: Khoán 500USD

| ID | WBS | Task | Duration | Start | Finish | Predecessors | Complete | Baseline start | Baseline finish | Baseline duration | Baseline 1 start | Baseline 1 finish | Constraint | Resources | Work | Actual work | Cost | Baseline cost | Actual cost |
| --- | --- | --- | --- | --- | --- | --- | --- | --- | --- | --- | --- | --- | --- | --- | --- | --- | --- | --- | --- |
| 25 | 1.3.4 | **Lập trình phần mềm** | 32d | 2022-12-14 15:00 A | 2023-01-27 15:00 A |  | 100% | 2022-12-01 08:00 | 2022-12-16 16:00 | 11.88d | 2022-12-20 14:00 | 2023-01-05 12:00 |  |  | 200h | 200h | 4,960 | 2,080 | 4,960 |
| 26 | 1.3.4.1 | Lập trình mức cơ sở | 12d | 2022-12-14 15:00 A | 2023-01-06 16:00 A | 21 | 100% | 2022-12-01 08:00 | 2022-12-08 14:00 | 4d | 2022-12-20 14:00 | 2022-12-28 09:00 |  | Nguyễn Văn An | 96h | 96h | 2,880 | 960 | 2,880 |
| 27 | 1.3.4.2 | **Lập trình chi tiết chức năng** | 14.88d | 2023-01-06 16:00 A | 2023-01-27 15:00 A |  | 100% | 2022-12-08 14:00 | 2022-12-16 16:00 | 6.25d | 2022-12-28 09:00 | 2023-01-05 12:00 |  |  | 104h | 104h | 2,080 | 1,120 | 2,080 |
| 28 | 1.3.4.2.1 | Lập trình nhóm nghiệp vụ chức năng cơ bản. | 3d | 2023-01-06 16:00 A | 2023-01-12 16:00 A | 26 | 100% | 2022-12-08 14:00 | 2022-12-15 10:00 | 3d | 2022-12-28 09:00 | 2023-01-03 15:00 |  | Võ Văn Chánh | 24h | 24h | 480 | 480 | 480 |
| 29 | 1.3.4.2.2 | Lập trình nhóm nghiệp vụ chức năng nâng cao | 10d | 2023-01-06 16:00 A | 2023-01-27 15:00 A | 26 | 100% | 2022-12-08 14:00 | 2022-12-16 16:00 | 4d | 2022-12-28 09:00 | 2023-01-05 12:00 | finish no earlier than 2022-12-15 17:00 | Trần Vũ Bình | 80h | 80h | 1,600 | 640 | 1,600 |
